# C:\Users\chogu\Downloads\qualicenter

Schedule from MS Project, 2024-04-24 to 2024-05-15, A marks actual dates.

## Calendars

- Standard: Mon-Fri 08:00-12:00, 13:00-17:00; Sat-Sun off. Exceptions (off unless hours are given): 2024-05-04 to 2024-05-05 08:00-12:00, 13:00-17:00, 2024-05-12 08:00-12:00, 13:00-17:00.

## Resources

| Resource |
| --- |
| Gustavo |
| Abigail |
| Aldehil |
| Ingrid |
| Noh Ah |
| Angel |
| Pablo |
| Eduardo |
| Iván |
| Gerardo |
| Dani |
| Angel - Pobol |

## Schedule

| ID | WBS | Task | Type | Duration | Start | Finish | Predecessors | Complete | Remaining | Total slack | Constraint | Resources | Work | Actual work | Text1 |
| --- | --- | --- | --- | --- | --- | --- | --- | --- | --- | --- | --- | --- | --- | --- | --- |
| 1 | 1 | **Sprint 85%** |  | 19d | 2024-04-24 A | 2024-05-15 |  | 95% | 0.92d | 0d |  |  | 7752.8h | 6648h |  |
| 2 | 1.1 | **Cliente** |  | 17.6d | 2024-04-24 A | 2024-05-14 A |  | 100% |  |  |  |  | 1020.8h | 1020.8h |  |
| 3 | 1.1.1 | **El sistema debe ser capaz de registrar el tiempo acumulado de la llamada desde el momento en que el cliente marca al número de atención.** |  | 14.6d | 2024-04-29 A | 2024-05-14 A |  | 100% |  |  |  | Gustavo | 272.8h | 272.8h | CR1 |
| 4 | 1.1.1.1 | **Recibir la llamada con Amazon Connect.** |  | 1d | 2024-04-29 A | 2024-04-29 A |  | 100% |  |  |  | Gustavo | 24h | 24h |  |
| 5 | 1.1.1.1.1 | Crear la instancia de Amazon Connect en una cuenta de AWS. |  | 1d | 2024-04-29 A | 2024-04-29 A |  | 100% |  |  | start no earlier than 2024-04-29 | Gustavo | 8h | 8h |  |
| 6 | 1.1.1.1.2 | Reclamar un número de teléfono y asignarlo a la instancia | milestone | 0d | 2024-04-29 A | 2024-04-29 A |  | 100% |  |  | start no earlier than 2024-04-29 | Gustavo |  |  |  |
| 7 | 1.1.1.1.3 | Configurar la instancia de Amazon Connect para recibir llamadas entrantes con un flujo predeterminado. |  | 1d | 2024-04-29 A | 2024-04-29 A | 6 | 100% |  |  |  | Gustavo | 8h | 8h |  |
| 8 | 1.1.1.2 | **Tener el control de la llamada.** |  | 2.1d | 2024-04-30 A | 2024-05-02 A |  | 100% |  |  |  | Gustavo | 32.8h | 32.8h |  |
| 9 | 1.1.1.2.1 | Crear las cuentas de agentes y administradores, con sus atributos respectivos como nombres y horarios. |  | 0.5d | 2024-04-30 A | 2024-04-30 A | 7 | 100% |  |  |  | Gustavo | 4h | 4h |  |
| 10 | 1.1.1.2.2 | Implementar funcionalidades de colas |  | 0.5d | 2024-04-30 A | 2024-04-30 A | 9 | 100% |  |  |  | Gustavo | 4h | 4h |  |
| 11 | 1.1.1.2.3 | Implementar ruteos y prioridades de colas. | milestone | 0d | 2024-04-30 A | 2024-04-30 A | 10 | 100% |  |  |  | Gustavo |  |  |  |
| 12 | 1.1.1.2.4 | Crear un flujo propio de control de llamadas |  | 1d | 2024-05-01 A | 2024-05-01 A | 11 | 100% |  |  |  | Gustavo | 8h | 8h |  |
| 13 | 1.1.1.2.5 | Asignar el flujo al número reclamado y asignado a la instancia |  | 0.1d | 2024-05-02 A | 2024-05-02 A | 12 | 100% |  |  |  | Gustavo | 0.8h | 0.8h |  |
| 14 | 1.1.1.3 | **Indicarle a Connect iniciar el registro del tiempo de la llamada.** |  | 7.5d | 2024-05-02 A | 2024-05-09 A | 13 | 100% |  |  |  | Gustavo | 104h | 104h |  |
| 15 | 1.1.1.3.1 | Asignar permisos a Amazon Connect de acceso a Lambda mediante un perfil de IAM |  | 0.5d | 2024-05-02 A | 2024-05-02 A | 13 | 100% |  |  |  | Gustavo | 4h | 4h |  |
| 16 | 1.1.1.3.2 | Implementar un atributo de Amazon Connect de duración de llamada para las llamadas finalizadas, el cual utilizará la API de Amazon Connect Flow para en cualquier momento obtener la duración total de una llamada finalizada. |  | 3d | 2024-05-02 A | 2024-05-05 A | 15 | 100% |  |  |  | Gustavo | 24h | 24h |  |
| 17 | 1.1.1.3.3 | Adicionalmente para cada llamada capturar detalles importantes como el número del llamante, el tiempo y el asunto. Guardarlos como atributos en el flujo de llamada en la instancia de Amazon Connect. | milestone | 0d | 2024-05-06 A | 2024-05-06 A | 16 | 100% |  |  |  | Gustavo |  |  |  |
| 18 | 1.1.1.3.4 | Iniciar un temporizador para cada llamada que se reciba, para así implementar una función Lambda en el flujo de llamadas, el cual podrá ser llamada en cualquier momento para obtener la duración en tiempo real de manera precisa para cada llamada. |  | 3d | 2024-05-06 A | 2024-05-09 A | 17 | 100% |  |  |  | Gustavo | 24h | 24h |  |
| 19 | 1.1.1.4 | **Recuperar el tiempo registrado por connect.** |  | 4d | 2024-05-09 A | 2024-05-14 A |  | 100% |  |  |  | Gustavo | 64h | 64h |  |
| 20 | 1.1.1.4.1 | Implementar en la interfaz de usuario la duración acumulada de la llamada para los agentes y administradores relevantes |  | 3d | 2024-05-09 A | 2024-05-13 A | 18 | 100% |  |  |  | Gustavo | 24h | 24h |  |
| 21 | 1.1.1.4.2 | Realizar pruebas exhaustivas invocando al API desde la interfaz, para garantizar el seguimiento correcto de la duración y la recuperación de datos de llamada. Validar contra diferentes escenarios como transferencias de llamada |  | 1d | 2024-05-13 A | 2024-05-14 A | 20 | 100% |  |  |  | Gustavo | 8h | 8h |  |
| 22 | 1.1.2 | **El sistema debe buscar un agente disponible para atender la llamada, si no hay uno entonces se deberá colocar la llamada en una cola de esperal. . El sistema debe identificar al cliente mediante su número de teléfono, si el cliente está registrado con una** |  | 14.5d | 2024-04-29 A | 2024-05-14 A |  | 100% |  |  |  | Gustavo | 212h | 212h | CR2 |
| 23 | 1.1.2.1 | **Recuperar el número del cliente.** |  | 1d | 2024-04-29 A | 2024-04-29 A |  | 100% |  |  |  | Gustavo | 16h | 16h |  |
| 24 | 1.1.2.1.1 | Asignar un atributo en el flujo de Amazon Connect que guarde el número del cliente para cada llamada |  | 1d | 2024-04-29 A | 2024-04-29 A |  | 100% |  |  |  | Gustavo | 8h | 8h |  |

| ID | WBS | Task | Type | Duration | Start | Finish | Predecessors | Complete | Resources | Work | Actual work | Text1 |
| --- | --- | --- | --- | --- | --- | --- | --- | --- | --- | --- | --- | --- |
| 25 | 1.1.2.2 | **Comparar el número con los clientes para encontrar al cliente.** |  | 5d | 2024-05-03 A | 2024-05-07 A | 13 | 100% | Gustavo | 64h | 64h |  |
| 26 | 1.1.2.2.1 | Montar y llenar una base de datos para relacionar números telefónicos de los clientes a datos individuales como nombre y número de póliza | manual | 2d | 2024-05-03 A | 2024-05-04 A | 13 | 100% | Gustavo | 16h | 16h |  |
| 27 | 1.1.2.2.2 | Implementar una función Lambda en el flujo de la instancia de Amazon Connect, el cual comparará el número de un cliente guardado en un atributo con los números guardados en la base de datos. | manual | 1d | 2024-05-07 A | 2024-05-07 A | 26 | 100% | Gustavo | 8h | 8h |  |
| 28 | 1.1.2.3 | **Recuperar la información de ese cliente.** |  | 1d | 2024-05-10 A | 2024-05-10 A |  | 100% | Gustavo | 16h | 16h |  |
| 29 | 1.1.2.3.1 | Dentro de la función Lambda en el flujo de la instancia de Amazon Connect, después de hacer un match con los datos de un cliente y su número, regresará los datos del cliente de la base de datos para así guardarlos como atributo en la instancia. | manual | 1d | 2024-05-10 A | 2024-05-10 A | 27 | 100% | Gustavo | 8h | 8h |  |
| 30 | 1.1.2.4 | **Si todos los agentes están ocupados, notificarle al cliente que está en la cola de espera.** |  | 0.5d | 2024-05-14 A | 2024-05-14 A |  | 100% | Gustavo | 8h | 8h |  |
| 31 | 1.1.2.4.1 | Modificar las colas de espera de la instancia de Amazon Connect para que ocurran distintos escenarios si la cola está llena. | milestone, manual | 0d | 2024-05-14 A | 2024-05-14 A | 29 | 100% | Gustavo |  |  |  |
| 32 | 1.1.2.4.2 | Si la cola está llena o no hay agentes disponibles, entonces reproducir un audio que indique que no hay un agente disponible reproducido en un loop. | milestone, manual | 0d | 2024-05-14 A | 2024-05-14 A | 31 | 100% | Gustavo |  |  |  |
| 33 | 1.1.2.4.3 | Si la cola no está llena y hay agentes disponibles, rutear la llamada al flujo propio de la instancia | manual | 0.5d | 2024-05-14 A | 2024-05-14 A | 32 | 100% | Gustavo | 4h | 4h |  |
| 34 | 1.1.3 | **El sistema debe mostrar al agente los datos del cliente, incluyendo nombre, edad, datos de póliza y tiempo acumulado de llamada .l agente debe recibir una notificación de la llamada entrante junto con una cuenta regresiva antes de que pueda volver a reali** |  | 10.5d | 2024-05-03 A | 2024-05-14 A | 13 | 100% | Gustavo | 152h | 152h | CR3 |
| 35 | 1.1.3.1 | **Desplegar toda la información del cliente.** |  | 4d | 2024-05-03 A | 2024-05-06 A | 13 | 100% | Gustavo | 48h | 48h |  |
| 36 | 1.1.3.1.1 | Configurar el API de Amazon Connect y las funciones Lambda asignadas al flujo de llamada para recuperar datos del cliente | manual | 1d | 2024-05-03 A | 2024-05-03 A | 13 | 100% | Gustavo | 8h | 8h |  |
| 37 | 1.1.3.1.2 | Implementar una interfaz de usuario en la aplicación del agente para mostrar los datos del cliente, incluyendo nombre, edad, datos de póliza y tiempo acumulado de llamada. | manual | 1d | 2024-05-06 A | 2024-05-06 A | 36 | 100% | Gustavo | 8h | 8h |  |
| 38 | 1.1.3.2 | **Generar una alerta en la pantalla del agente sobre una llamada entrante** |  | 3.5d | 2024-05-09 A | 2024-05-13 A |  | 100% | Gustavo | 40h | 40h |  |
| 39 | 1.1.3.2.1 | Configurar el API de Amazon Connect para crear una interfaz “Agent Workspace” dentro de la aplicación | manual | 1d | 2024-05-09 A | 2024-05-09 A | 37 | 100% | Gustavo | 8h | 8h |  |
| 40 | 1.1.3.2.2 | Generar una alerta en la pantalla del agente sobre una llamada entrante, utilizando mensajes emergentes y sonidos audibles. | manual | 0.5d | 2024-05-13 A | 2024-05-13 A | 39 | 100% | Gustavo | 4h | 4h |  |
| 41 | 1.1.3.3 | **Establecer la conexión entre el agente y el cliente.** |  | 1d | 2024-05-13 A | 2024-05-14 A |  | 100% | Gustavo | 16h | 16h |  |
| 42 | 1.1.3.3.1 | Implementar la funcionalidad de conexión entre el agente y el cliente, utilizando las funcionalidades del API de Amazon Connect y la interfaz “Agent Workspace”. | manual | 0.5d | 2024-05-13 A | 2024-05-13 A | 40 | 100% | Gustavo | 4h | 4h |  |
| 43 | 1.1.3.3.2 | Asignar a cada perfil de Agente en la instancia de Amazon Connect un tiempo “After-Call-Work” | milestone, manual | 0d | 2024-05-14 A | 2024-05-14 A | 42 | 100% | Gustavo |  |  |  |
| 44 | 1.1.3.3.3 | Mostrar el temporizador “After-Call-Work” en la aplicación después de desconectar cada llamada. | manual | 0.5d | 2024-05-14 A | 2024-05-14 A | 43 | 100% | Gustavo | 4h | 4h |  |
| 45 | 1.1.4 | **Se registra, por llamada, el analisis sentimental y la transcripción en tiempo real cuando la conexión entre el cliente y el agente comienza** |  | 15d | 2024-04-24 A | 2024-05-10 A |  | 100% | Angel | 384h | 384h | CR4 |
| 46 | 1.1.4.1 | **Inicio una llamada entre agente y cliente** |  | 8d | 2024-04-24 A | 2024-05-03 A |  | 100% | Angel | 120h | 120h |  |
| 47 | 1.1.4.1.1 | Configurar Amazon Connect par amanejar llamadas entrantes | manual | 5d | 2024-04-24 A | 2024-04-30 A |  | 100% | Angel | 40h | 40h |  |
| 48 | 1.1.4.1.2 | Hacer que el sistema pueda identificar usuarios y conectar las llamadas correctamente entre agente y cliente | manual | 1d | 2024-05-01 A | 2024-05-01 A | 47 | 100% | Angel | 8h | 8h |  |
| 49 | 1.1.4.1.3 | Integrar el API necesario para capturar el audio de la llamada en tiempo real | manual | 1d | 2024-05-03 A | 2024-05-03 A |  | 100% | Angel | 8h | 8h |  |

| ID | WBS | Task | Type | Duration | Start | Finish | Predecessors | Complete | Remaining | Total slack | Resources | Work | Actual work | Text1 |
| --- | --- | --- | --- | --- | --- | --- | --- | --- | --- | --- | --- | --- | --- | --- |
| 50 | 1.1.4.2 | **Se registra el análisis sentimental del cliente** |  | 6d | 2024-05-03 A | 2024-05-08 A |  | 100% |  |  | Angel | 96h | 96h |  |
| 51 | 1.1.4.2.1 | Aprender a obtener el analisis sentimental | manual | 1d | 2024-05-03 A | 2024-05-03 A |  | 100% |  |  | Angel | 8h | 8h |  |
| 52 | 1.1.4.2.2 | Desarrollar el backend para enviar texto transcrito (del audio) al servicio de análisis de sentimientos | manual | 3d | 2024-05-06 A | 2024-05-08 A |  | 100% |  |  | Angel | 24h | 24h |  |
| 53 | 1.1.4.2.3 | Configurar la integración para que cada segmento de texto transcrito se envíe al servicio de análisis tan pronto como esté disponible. | manual | 2d | 2024-05-07 A | 2024-05-08 A |  | 100% |  |  | Angel | 16h | 16h |  |
| 54 | 1.1.4.3 | **Se registra la transcripción en tiempo real** |  | 3d | 2024-05-08 A | 2024-05-10 A |  | 100% |  |  | Angel | 48h | 48h |  |
| 55 | 1.1.4.3.1 | Verificar si se necesita usar Amazon Transcribe y aprenderlo, o si basta con Amazon Comprehend | manual | 1d | 2024-05-08 A | 2024-05-08 A |  | 100% |  |  | Angel | 8h | 8h |  |
| 56 | 1.1.4.3.2 | Configurar Amazon Connect para enviar un audio | manual | 1d | 2024-05-09 A | 2024-05-09 A | 55 | 100% |  |  | Angel | 8h | 8h |  |
| 57 | 1.1.4.3.3 | Crear función para recibir y procesar el texto transcrito. | manual | 1d | 2024-05-10 A | 2024-05-10 A | 56 | 100% |  |  | Angel | 8h | 8h |  |
| 58 | 1.2 | **Agente** |  | 18d | 2024-04-25 A | 2024-05-15 |  | 96% | 0.68d | 0d |  | 3808h | 3187.64h |  |
| 59 | 1.2.1 | **El agente visualiza un script del dialogo que va a tener con el cliente:** |  | 18d | 2024-04-25 A | 2024-05-15 |  | 98% | 0.45d | 0d | Eduardo | 384h | 284.47h | AR1 |
| 60 | 1.2.1.1 | **Tener un panel visible donde se colocara el script.** |  | 2d | 2024-04-25 A | 2024-04-26 A |  | 100% |  |  | Eduardo | 32h | 32h |  |
| 61 | 1.2.1.1.1 | Realizar el front-end del panel donde se colocara el script. |  | 2d | 2024-04-25 A | 2024-04-26 A |  | 100% |  |  | Eduardo | 16h | 16h |  |
| 62 | 1.2.1.2 | **Colocar un script dummy en el panel** |  | 2d | 2024-04-30 A | 2024-05-01 A |  | 100% |  |  | Eduardo | 32h | 32h |  |
| 63 | 1.2.1.2.1 | Crear un script con datos dummy directo en el front-end | manual | 2d | 2024-04-30 A | 2024-05-01 A | 61 | 100% |  |  | Eduardo | 16h | 16h |  |
| 64 | 1.2.1.3 | **Visualizar datos reales en el script.** |  | 8d | 2024-05-03 A | 2024-05-10 A |  | 100% |  |  | Eduardo | 128h | 128h |  |
| 65 | 1.2.1.3.1 | Crear una conexión a la Base de Datos para traer por la API los datos del cliente y colocarlos en tiempo real en el script. | manual | 8d | 2024-05-03 A | 2024-05-10 A | 63 | 100% |  |  | Eduardo | 64h | 64h |  |
| 66 | 1.2.1.4 | **Colocar los campos de registro** |  | 4d | 2024-05-12 A | 2024-05-15 |  | 90% | 0.4d | 0d | Eduardo | 48h | 44.8h |  |
| 67 | 1.2.1.4.1 | Crear y hacer funcionales los campos de registro de la información del cliente |  | 4d | 2024-05-12 A | 2024-05-15 | 65 | 90% | 0.4d | 0d | Eduardo | 32h | 28.8h |  |
| 68 | 1.2.2 | **Para que el agente, durante la llamada, conozca la información del cliente, existe un apartado de información del cliente que será desplegado tal y como se especifica EN EL REQUERIMIENTO NUMERO 3 DE HERRAMIENTAS EXTERNAS** |  | 6d | 2024-04-29 A | 2024-05-04 A |  | 100% |  |  | Eduardo | 144h | 144h | AR2 |
| 69 | 1.2.2.1 | **Visualiza un apartado con datos dummy del cliente** |  | 3d | 2024-04-29 A | 2024-05-01 A |  | 100% |  |  | Eduardo | 48h | 48h |  |
| 70 | 1.2.2.1.1 | Los datos dummy del cliente se visualizan en el Frontend del panel | manual | 3d | 2024-04-29 A | 2024-05-01 A |  | 100% |  |  | Eduardo | 24h | 24h |  |
| 71 | 1.2.2.2 | **Visualiza un apartado con los datos reales del cliente en tiempo real** |  | 3d | 2024-05-02 A | 2024-05-04 A |  | 100% |  |  | Eduardo | 48h | 48h |  |
| 72 | 1.2.2.2.1 | Se crea una conexión a la base de datos y los datos del cliente se visualizan en tiempo real |  | 3d | 2024-05-02 A | 2024-05-04 A | 70 | 100% |  |  | Eduardo | 24h | 24h |  |
| 73 | 1.2.3 | **Para facilitar el envío de los diferentes servicios (grúa, ambulancia y ajustador), el agente tiene un espacio en su pantalla principal para ingresar la ubicación del cliente para que el envío de los servicios se hagan a esa dirección.** |  | 5d | 2024-04-29 A | 2024-05-03 A |  | 100% |  |  | Abigail | 120h | 120h | AR3 |
| 74 | 1.2.3.1 | **Espacio para escribir la dirección del cliente:** |  | 5d | 2024-04-29 A | 2024-05-03 A |  | 100% |  |  | Abigail | 80h | 80h |  |
| 75 | 1.2.3.1.1 | Crear archivo CSS |  | 0.5d | 2024-04-29 A | 2024-04-29 A |  | 100% |  |  | Abigail | 4h | 4h |  |
| 76 | 1.2.3.1.2 | Crear archivo JS |  | 0.5d | 2024-04-29 A | 2024-04-29 A | 75 | 100% |  |  | Abigail | 4h | 4h |  |
| 77 | 1.2.3.1.3 | Diseñar el componente en el espacio designado de la aplicación |  | 1d | 2024-04-30 A | 2024-04-30 A | 76 | 100% |  |  | Abigail | 8h | 8h |  |
| 78 | 1.2.3.1.4 | Programar la funcionalidad del FrontEnd |  | 3d | 2024-05-01 A | 2024-05-03 A | 77 | 100% |  |  | Abigail | 24h | 24h |  |

| ID | WBS | Task | Duration | Start | Finish | Predecessors | Complete | Remaining | Total slack | Resources | Work | Actual work | Text1 |
| --- | --- | --- | --- | --- | --- | --- | --- | --- | --- | --- | --- | --- | --- |
| 79 | 1.2.4 | **Con los datos del cliente y a partir de sus pólizas, se despliega un menú que muestra los vehículos registrados del cliente.** | 18d | 2024-04-25 A | 2024-05-15 |  | 94% | 1.01d | 0d | Eduardo | 368h | 160.8h | AR4 |
| 80 | 1.2.4.1 | **Visualiza un apartado con datos dummy del cliente** | 4d | 2024-04-25 A | 2024-04-30 A |  | 100% |  |  | Eduardo | 64h | 64h |  |
| 81 | 1.2.4.1.1 | Los datos dummy del cliente se visualizan en el Frontend del panel | 4d | 2024-04-25 A | 2024-04-30 A |  | 100% |  |  | Eduardo | 32h | 32h |  |
| 82 | 1.2.4.2 | **Visualiza un apartado con los datos reales del cliente en tiempo rea** | 12d | 2024-05-03 A | 2024-05-15 |  | 93% | 0.9d | 0d | Eduardo | 192h | 88.8h |  |
| 83 | 1.2.4.2.1 | Se crea una conexión a la base de datos. | 6d | 2024-05-03 A | 2024-05-08 A |  | 100% |  |  | Eduardo | 48h | 48h |  |
| 84 | 1.2.4.2.2 | Dependiendo de la póliza del cliente con un condicional despliega información sobre sus autos | 6d | 2024-05-09 A | 2024-05-15 | 83 | 85% | 0.9d | 0d | Eduardo | 48h | 40.8h |  |
| 85 | 1.2.5 | **En caso de necesitar proveer una ayuda rápida al cliente, el agente tiene una sección en su pantalla principal con 2 botones, uno para mandar ambulancia y otro para enviar grúa.** | 1d | 2024-05-04 A | 2024-05-04 A | 78 | 100% |  |  | Abigail | 24h | 24h | AR5 |
| 86 | 1.2.5.1 | **Diseñar y posicionar los botones correctamente:** | 1d | 2024-05-04 A | 2024-05-04 A |  | 100% |  |  | Abigail | 16h | 16h |  |
| 87 | 1.2.5.1.1 | Crear archivo CSS | 0.5d | 2024-05-04 A | 2024-05-04 A |  | 100% |  |  | Abigail | 4h | 4h |  |
| 88 | 1.2.5.1.2 | Crear archivo JS | 0.3d | 2024-05-04 A | 2024-05-04 A | 87 | 100% |  |  | Abigail | 2.4h | 2.4h |  |
| 89 | 1.2.5.1.3 | Diseñar los componentes en el espacio designado de la aplicación | 0.2d | 2024-05-04 A | 2024-05-04 A | 88 | 100% |  |  | Abigail | 1.6h | 1.6h |  |
| 90 | 1.2.6 | **Durante su conversación con el cliente, el agente le pregunta al cliente si necesita el servicio de una grúa, si el cliente dice que sí, deberá oprimir el botón "Mandar Grúa", este botón mandará una alerta con la ubicación del cliente y el agente le dirá** | 9d | 2024-05-05 A | 2024-05-14 A | 89 | 100% |  |  | Abigail | 216h | 216h | AR6 |
| 91 | 1.2.6.1 | **Recuperar el número del cliente:** | 2d | 2024-05-05 A | 2024-05-06 A |  | 100% |  |  | Abigail | 32h | 32h |  |
| 92 | 1.2.6.1.1 | API para recuperar el número del cliente | 1d | 2024-05-05 A | 2024-05-05 A |  | 100% |  |  | Abigail | 8h | 8h |  |
| 93 | 1.2.6.1.2 | Conexión de la funcionalidad del botón con el BackEnd | 1d | 2024-05-06 A | 2024-05-06 A | 92 | 100% |  |  | Abigail | 8h | 8h |  |
| 94 | 1.2.6.2 | **Recuperar la dirección del cliente** | 1d | 2024-05-07 A | 2024-05-07 A |  | 100% |  |  | Abigail | 16h | 16h |  |
| 95 | 1.2.6.2.1 | Funciónalidad que reciba la dirección desde el FrontEnd | 1d | 2024-05-07 A | 2024-05-07 A | 93 | 100% |  |  | Abigail | 8h | 8h |  |
| 96 | 1.2.6.3 | **Mandar un SMS con la alerta** | 6d | 2024-05-08 A | 2024-05-14 A |  | 100% |  |  | Abigail | 96h | 96h |  |
| 97 | 1.2.6.3.1 | Configurar instancia Amazon SNS | 2d | 2024-05-08 A | 2024-05-09 A | 95 | 100% |  |  | Abigail | 16h | 16h |  |
| 98 | 1.2.6.3.2 | API para mandar el mensaje | 2d | 2024-05-10 A | 2024-05-12 A | 97 | 100% |  |  | Abigail | 16h | 16h |  |
| 99 | 1.2.6.3.3 | Función Lambda para mandar el mensaje | 2d | 2024-05-13 A | 2024-05-14 A | 98 | 100% |  |  | Abigail | 16h | 16h |  |
| 100 | 1.2.7 | **Durante su conversación con el cliente, el agente le pregunta al cliente si necesita asistencia médica, si el cliente dice que sí, deberá oprimir el botón "Mandar Ambulancia", este botón mandará una alerta con la ubicación del cliente y el agente le dirá** | 9d | 2024-05-05 A | 2024-05-14 A | 89 | 100% |  |  | Abigail | 216h | 216h | AR7 |
| 101 | 1.2.7.1 | **Recuperar el número del cliente:** | 2d | 2024-05-05 A | 2024-05-06 A |  | 100% |  |  | Abigail | 32h | 32h |  |
| 102 | 1.2.7.1.1 | API para recuperar el número del cliente | 1d | 2024-05-05 A | 2024-05-05 A |  | 100% |  |  | Abigail | 8h | 8h |  |
| 103 | 1.2.7.1.2 | Conexión de la funcionalidad del botón con el BackEnd | 1d | 2024-05-06 A | 2024-05-06 A | 102 | 100% |  |  | Abigail | 8h | 8h |  |

| ID | WBS | Task | Duration | Start | Finish | Predecessors | Complete | Remaining | Total slack | Constraint | Resources | Work | Actual work | Text1 |
| --- | --- | --- | --- | --- | --- | --- | --- | --- | --- | --- | --- | --- | --- | --- |
| 104 | 1.2.7.2 | **Recuperar la dirección del cliente** | 1d | 2024-05-07 A | 2024-05-07 A |  | 100% |  |  |  | Abigail | 16h | 16h |  |
| 105 | 1.2.7.2.1 | Funciónalidad que reciba la dirección desde el FrontEnd | 1d | 2024-05-07 A | 2024-05-07 A | 103 | 100% |  |  |  | Abigail | 8h | 8h |  |
| 106 | 1.2.7.3 | **Mandar un SMS con la alerta** | 6d | 2024-05-08 A | 2024-05-14 A |  | 100% |  |  |  | Abigail | 96h | 96h |  |
| 107 | 1.2.7.3.1 | Configurar instancia Amazon SNS | 2d | 2024-05-08 A | 2024-05-09 A | 105 | 100% |  |  |  | Abigail | 16h | 16h |  |
| 108 | 1.2.7.3.2 | API para mandar el mensaje | 2d | 2024-05-10 A | 2024-05-12 A | 107 | 100% |  |  |  | Abigail | 16h | 16h |  |
| 109 | 1.2.7.3.3 | Función Lambda para mandar el mensaje | 2d | 2024-05-13 A | 2024-05-14 A | 108 | 100% |  |  |  | Abigail | 16h | 16h |  |
| 110 | 1.2.8 | **Cuando se selecciona la opción de enviar ayuda (requerimiento 5, 6), automáticamente se manda un mensaje de texto al número del cliente en llamada con la alerta de ayuda en camino.** | 10d | 2024-05-04 A | 2024-05-14 |  | 93% | 0.67d | 1d |  | Pablo | 304h | 224h | AR8 |
| 111 | 1.2.8.1 | **Ser capaz de generar una liga de un servicio de mapas (Como google maps) que contenga una dirección.** | 1d | 2024-05-04 A | 2024-05-04 A |  | 100% |  |  |  | Pablo | 24h | 24h |  |
| 112 | 1.2.8.1.1 | Investigar al respecto, ya sea una API u otra forma de saberlo. | 1d | 2024-05-04 A | 2024-05-04 A | 73 | 100% |  |  |  | Pablo | 8h | 8h |  |
| 113 | 1.2.8.1.2 | Generar enlaces a partir de un script que reciba como input una dirección y retorne un enlace. | 1d | 2024-05-04 A | 2024-05-04 A | 73 | 100% |  |  |  | Pablo | 8h | 8h |  |
| 114 | 1.2.8.2 | **Ser capaz de enviar mensajes de texto a través de un script de JS.** | 2d | 2024-05-04 A | 2024-05-05 A |  | 100% |  |  |  | Pablo | 40h | 40h |  |
| 115 | 1.2.8.2.1 | Investigar sobre alguna librería o API que me permita enviar mensajes a un número dado. | 1d | 2024-05-04 A | 2024-05-04 A | 73 | 100% |  |  |  | Pablo | 8h | 8h |  |
| 116 | 1.2.8.2.2 | Escribir un código capaz de enviar mensajes a un número dado. | 1d | 2024-05-05 A | 2024-05-05 A | 115 | 100% |  |  |  | Pablo | 8h | 8h |  |
| 117 | 1.2.8.2.3 | Incluir un mensaje predeterminado e incluir el enlace alcanzado con el milestone | 1d | 2024-05-05 A | 2024-05-05 A | 115 | 100% |  |  |  | Pablo | 8h | 8h |  |
| 118 | 1.2.8.3 | **Enviar automáticamente mensajes al ingresar la dirección desde la página durante la llamada.** | 10d | 2024-05-04 A | 2024-05-14 |  | 90% | 1d | 1d |  | Pablo | 160h | 144h |  |
| 119 | 1.2.8.3.1 | A partir de la finalización del requerimiento 3 con el ingreso de la dirección en la página final, enlazar el script de mensaje de la milestone 2 con la funcionalidad de un botón de submit. | 10d | 2024-05-04 A | 2024-05-14 | 73 | 90% | 1d | 1d |  | Pablo | 80h | 72h |  |
| 120 | 1.2.9 | **En la sección izquierda, de la pantalla del agente, se muestra una transcripción en tiempo real de la llamada en curso** | 11d | 2024-04-30 A | 2024-05-10 A |  | 100% |  |  |  | Angel | 472h | 472h | AR9 |
| 121 | 1.2.9.1 | **Se recupera la transcripción registrada de la llamada** | 8d | 2024-04-30 A | 2024-05-07 A |  | 100% |  |  |  | Angel | 120h | 120h |  |
| 122 | 1.2.9.1.1 | Recuperar la transcripción de la llamada | 1d | 2024-04-30 A | 2024-04-30 A |  | 100% |  |  |  | Angel | 8h | 8h |  |
| 123 | 1.2.9.1.2 | Desarrollar un sistema de bufferización para almacenar temporalmente las transcripciones mientras son procesadas y antes de ser mostradas. | 6d | 2024-05-01 A | 2024-05-06 A | 122 | 100% |  |  |  | Angel | 48h | 48h |  |
| 124 | 1.2.9.2 | **Se muestra la transcripción de la llamada** | 10d | 2024-04-30 A | 2024-05-09 A |  | 100% |  |  |  | Angel | 232h | 232h |  |
| 125 | 1.2.9.2.1 | Diseñar la interfaz donde se mostrarán las transcripciones | 1d | 2024-04-30 A | 2024-04-30 A |  | 100% |  |  |  | Angel | 8h | 8h |  |
| 126 | 1.2.9.2.2 | Crear una aplicación en React para crear los componentes funcionales necesarios y para actualizaciones en tiempo real | 1d | 2024-05-01 A | 2024-05-01 A | 125 | 100% |  |  |  | Angel | 8h | 8h |  |
| 127 | 1.2.9.2.3 | La transcripción mostrada esté sincronizada con el audio de la llamada, actualizando la pantalla a medida que se disponga | 8d | 2024-05-02 A | 2024-05-09 A | 126 | 100% |  |  | finish no earlier than 2024-05-09 | Angel | 64h | 64h |  |
| 128 | 1.2.9.2.4 | Crear API endpoints para recuperar las transcripciones desde el almacenamiento temporal o buffer y enviarlas al frontend de la aplicación del agente. | 9d | 2024-05-01 A | 2024-05-09 A | 122 | 100% |  |  | finish no earlier than 2024-05-09 | Angel | 72h | 72h |  |

| ID | WBS | Task | Type | Duration | Start | Finish | Predecessors | Complete | Remaining | Total slack | Resources | Work | Actual work | Text1 |
| --- | --- | --- | --- | --- | --- | --- | --- | --- | --- | --- | --- | --- | --- | --- |
| 129 | 1.2.9.3 | **Se anima la transcripción para que sea claramente legible** |  | 2d | 2024-05-03 A | 2024-05-04 A |  | 100% |  |  | Angel | 32h | 32h |  |
| 130 | 1.2.9.3.1 | Crear y diseñar el archivo CSS o bibliotecas de JavaScript para animar el scroll del texto |  | 2d | 2024-05-03 A | 2024-05-04 A |  | 100% |  |  | Angel | 16h | 16h |  |
| 131 | 1.2.10 | **Al estar dentro de una llamada con el cliente, el agente puede ver los botones que le dan la opción de silenciar o colgar la llamada. Al silenciarla, el cliente no será posible de escuchar al agente hasta que este deshabilite esta opción. Al colgar la lla** |  | 4d | 2024-05-02 A | 2024-05-06 |  | 98% | 0.08d | 8.9d | Pablo | 104h | 102.16h | AR10 |
| 132 | 1.2.10.1 | **Visualizar la llamada al conectar Amazon Connect con la página.** |  | 3d | 2024-05-02 A | 2024-05-05 A |  | 100% |  |  | Pablo | 48h | 48h |  |
| 133 | 1.2.10.1.1 | Una vez finalizado el funcionamiento y flujo de nuestra instancia de Connect, incluirla en nuestra página web en las pantallas correspondientes. |  | 1d | 2024-05-02 A | 2024-05-03 A | 8 | 100% |  |  | Pablo | 8h | 8h |  |
| 134 | 1.2.10.1.2 | Verificar el funcionamiento deseado de la llamada al realizar pruebas. |  | 1d | 2024-05-03 A | 2024-05-04 A | 133 | 100% |  |  | Pablo | 8h | 8h |  |
| 135 | 1.2.10.1.3 | Observar el comportamiento del flujo de la llamada establecido. |  | 1d | 2024-05-04 A | 2024-05-05 A | 134 | 100% |  |  | Pablo | 8h | 8h |  |
| 136 | 1.2.10.2 | **Utilizar eficientemente los botones incluidos en Amazon Connect para finalizar y silenciar llamadas.** |  | 1d | 2024-05-05 A | 2024-05-06 |  | 95% | 0.05d | 8.9d | Pablo | 24h | 22.8h |  |
| 137 | 1.2.10.2.1 | Al ver la llamada, se visualizan los botones de colgar y silenciar. |  | 1d | 2024-05-05 A | 2024-05-06 | 135 | 90% | 0.1d | 8.9d | Pablo | 8h | 7.2h |  |
| 138 | 1.2.10.2.2 | los botones cumplen con su función. |  | 1d | 2024-05-05 A | 2024-05-06 A | 135 | 100% |  |  | Pablo | 8h | 8h |  |
| 139 | 1.2.11 | **Botón de solicitud de ayuda en la pantalla principal. Al dar tap sobre él se desplegará un cuadro de texto para ingresar la descripción del problema y un botón que enviará la solicitud de ayuda, y un mensaje de confirmación al dar tap sobre el botón.** |  | 13d | 2024-05-01 A | 2024-05-14 | 77 | 96% | 0.57d | 1d | Aldehil | 456h | 402.61h | AR11 |
| 140 | 1.2.11.1 | **Mostrar el botón de ayuda en la pantalla principal del agente** |  | 13d | 2024-05-01 A | 2024-05-14 A |  | 100% |  |  | Aldehil | 184h | 184h |  |
| 141 | 1.2.11.1.1 | Implementar la interfaz de usuario para incluir el botón de ayuda en la pantalla principal. |  | 9d | 2024-05-01 A | 2024-05-14 A |  | 100% |  |  | Aldehil | 72h | 72h |  |
| 142 | 1.2.11.1.2 | Verificar que el botón sea visible y esté correctamente ubicado. | milestone | 0d | 2024-05-01 A | 2024-05-01 A | 141 | 100% |  |  | Aldehil |  |  |  |
| 143 | 1.2.11.1.3 | Confirmar que el botón responda a eventos de tap o clic. | milestone | 0d | 2024-05-01 A | 2024-05-01 A | 142 | 100% |  |  | Aldehil |  |  |  |
| 144 | 1.2.11.1.4 | Agregar un controlador de eventos al botón de ayuda. |  | 1d | 2024-05-02 A | 2024-05-02 A | 143 | 100% |  |  | Aldehil | 8h | 8h |  |
| 145 | 1.2.11.1.5 | Cuando el usuario toque el botón, enviar un mensaje a la consola para indicar que se ha activado el botón de ayuda. | milestone | 0d | 2024-05-02 A | 2024-05-02 A | 144 | 100% |  |  | Aldehil |  |  |  |
| 146 | 1.2.11.2 | **Desplegar una ventana emergente al darle tap al botón:** |  | 2d | 2024-05-03 A | 2024-05-04 A |  | 100% |  |  | Aldehil | 40h | 40h |  |
| 147 | 1.2.11.2.1 | Crear una ventana emergente que se muestre al tocar el botón de ayuda. |  | 1d | 2024-05-03 A | 2024-05-03 A | 145 | 100% |  |  | Aldehil | 8h | 8h |  |
| 148 | 1.2.11.2.2 | Diseñar la interfaz de la ventana emergente para incluir un cuadro de texto y un botón de enviar. |  | 2d | 2024-05-03 A | 2024-05-04 A | 145 | 100% |  |  | Aldehil | 16h | 16h |  |
| 149 | 1.2.11.3 | **Guardar un mensaje escrito por el usuario en el cuadro de texto:** |  | 2d | 2024-05-05 A | 2024-05-06 A |  | 100% |  |  | Aldehil | 48h | 48h |  |
| 150 | 1.2.11.3.1 | Implementar la lógica para capturar el texto ingresado por el usuario en el cuadro detexto. |  | 1d | 2024-05-05 A | 2024-05-05 A | 148 | 100% |  |  | Aldehil | 8h | 8h |  |
| 151 | 1.2.11.3.2 | Verificar que el texto se almacene correctamente en una variable o estructura de datos. |  | 1d | 2024-05-05 A | 2024-05-05 A | 148 | 100% |  |  | Aldehil | 8h | 8h |  |
| 152 | 1.2.11.3.3 | Agregar un controlador de eventos al botón de enviar en la ventana emergente. |  | 1d | 2024-05-06 A | 2024-05-06 A | 151 | 100% |  |  | Aldehil | 8h | 8h |  |
| 153 | 1.2.11.3.4 | Al tocar el botón de enviar, enviar el mensaje almacenado en la consola. |  | 1d | 2024-05-06 A | 2024-05-06 A | 151 | 100% |  |  | Aldehil | 8h | 8h |  |

| ID | WBS | Task | Duration | Start | Finish | Predecessors | Complete | Remaining | Total slack | Resources | Work | Actual work | Text1 |
| --- | --- | --- | --- | --- | --- | --- | --- | --- | --- | --- | --- | --- | --- |
| 154 | 1.2.11.4 | **Registrar el mensaje guardado en la base de datos:** | 3d | 2024-05-07 A | 2024-05-09 A |  | 100% |  |  | Aldehil | 56h | 56h |  |
| 155 | 1.2.11.4.1 | Configurar el controlador en el API para insertar el mensaje en la BD. | 2d | 2024-05-07 A | 2024-05-08 A | 153 | 100% |  |  | Aldehil | 16h | 16h |  |
| 156 | 1.2.11.4.2 | Configurar la conexión al endpoint, en la aplicación | 1d | 2024-05-09 A | 2024-05-09 A | 155 | 100% |  |  | Aldehil | 8h | 8h |  |
| 157 | 1.2.11.4.3 | Escribir la lógica para insertar el mensaje en la base de datos haciendo uso del endpoint. | 1d | 2024-05-09 A | 2024-05-09 A | 155 | 100% |  |  | Aldehil | 8h | 8h |  |
| 158 | 1.2.11.5 | **Desplegar un mensaje de confirmación al terminar este proceso:** | 1d | 2024-05-10 A | 2024-05-10 |  | 50% | 0.5d | 4d | Aldehil | 24h | 12h |  |
| 159 | 1.2.11.5.1 | Diseñar un mensaje de confirmación que se muestre al usuario después de guardar el mensaje en la base de datos. | 1d | 2024-05-10 A | 2024-05-10 | 157 | 50% | 0.5d | 4d | Aldehil | 8h | 4h |  |
| 160 | 1.2.11.5.2 | Mostrar el mensaje de confirmación en la pantalla principal del agente una vez que se utilice el botón de enviar. | 1d | 2024-05-10 A | 2024-05-10 | 157 | 50% | 0.5d | 4d | Aldehil | 8h | 4h |  |
| 161 | 1.2.12 | **Ícono que cambia de color de acuerdo a los resultados del análisis sentimental del cliente. Se mantiene en verde si el cliente está feliz y tranquilo, amarillo si empieza a ponerse impaciente, y rojo si está enojado o frustrado.** | 6d | 2024-04-30 A | 2024-05-05 A | 7 | 100% |  |  | Iván | 212h | 212h | AR12 |
| 162 | 1.2.12.1 | **El ícono se muestra con sus 3 colores (verde, amarillo, rojo).** | 1d | 2024-04-30 A | 2024-04-30 A |  | 100% |  |  | Iván | 40h | 40h |  |
| 163 | 1.2.12.1.1 | Se crea el componente para el ícono. | 1d | 2024-04-30 A | 2024-04-30 A | 7 | 100% |  |  | Iván | 8h | 8h |  |
| 164 | 1.2.12.1.2 | Se posiciona el componente dentro de la página. | 1d | 2024-04-30 A | 2024-04-30 A | 7 | 100% |  |  | Iván | 8h | 8h |  |
| 165 | 1.2.12.1.3 | El componente se puede mostrar en 3 colores (verde, rojo, amarillo). | 1d | 2024-04-30 A | 2024-04-30 A | 7 | 100% |  |  | Iván | 8h | 8h |  |
| 166 | 1.2.12.1.4 | El componente no presenta ningún fallo. | 1d | 2024-04-30 A | 2024-04-30 A | 7 | 100% |  |  | Iván | 8h | 8h |  |
| 167 | 1.2.12.2 | **El componente se ha vinculado con éxito a consultas en la base de datos y puede comunicarse con ella.** | 2d | 2024-05-01 A | 2024-05-02 A |  | 100% |  |  | Iván | 44h | 44h |  |
| 168 | 1.2.12.2.1 | Se implementa función para hacer que el componente cambie de color. | 0.5d | 2024-05-01 A | 2024-05-01 A | 166 | 100% |  |  | Iván | 4h | 4h |  |
| 169 | 1.2.12.2.2 | Se establecen parámetros dentro de la función según la información que se va a adquirir. | 1d | 2024-05-01 A | 2024-05-01 A | 166 | 100% |  |  | Iván | 8h | 8h |  |
| 170 | 1.2.12.2.3 | Se crea una rutina para recibir la información pertinente de la base de datos. | 1d | 2024-05-02 A | 2024-05-02 A | 169 | 100% |  |  | Iván | 8h | 8h |  |
| 171 | 1.2.12.2.4 | Se reciben los datos que necesita la función sin errores. | 1d | 2024-05-02 A | 2024-05-02 A | 169 | 100% |  |  | Iván | 8h | 8h |  |
| 172 | 1.2.12.3 | **El componente cumple con todas sus funcionalidades al usar datos pre-fabricados.** | 1d | 2024-05-03 A | 2024-05-03 A |  | 100% |  |  | Iván | 32h | 32h |  |
| 173 | 1.2.12.3.1 | Se generan datos pre-fabricados de prueba. 3.2 La función del componente recibe los datos. | 1d | 2024-05-03 A | 2024-05-03 A | 171 | 100% |  |  | Iván | 8h | 8h |  |
| 174 | 1.2.12.3.2 | La función del componente hace que el ícono cambie de color a partir de los datos. | 1d | 2024-05-03 A | 2024-05-03 A | 171 | 100% |  |  | Iván | 8h | 8h |  |
| 175 | 1.2.12.3.3 | No hay errores en el color mostrado. | 1d | 2024-05-03 A | 2024-05-03 A | 171 | 100% |  |  | Iván | 8h | 8h |  |
| 176 | 1.2.12.4 | **El componente cumple con todas sus funcionalidades en una llamada de prueba en tiempo real.** | 2d | 2024-05-04 A | 2024-05-05 A |  | 100% |  |  | Iván | 48h | 48h |  |
| 177 | 1.2.12.4.1 | Se realizan llamadas en tiempo real. | 1d | 2024-05-04 A | 2024-05-04 A | 175 | 100% |  |  | Iván | 8h | 8h |  |
| 178 | 1.2.12.4.2 | El componente recibe información adecuadamente. | 1d | 2024-05-05 A | 2024-05-05 A | 177 | 100% |  |  | Iván | 8h | 8h |  |
| 179 | 1.2.12.4.3 | El componente cambia de color adecuadamente. | 1d | 2024-05-05 A | 2024-05-05 A | 177 | 100% |  |  | Iván | 8h | 8h |  |
| 180 | 1.2.12.4.4 | No hay errores en el color mostrado. | 1d | 2024-05-05 A | 2024-05-05 A | 177 | 100% |  |  | Iván | 8h | 8h |  |

| ID | WBS | Task | Duration | Start | Finish | Predecessors | Complete | Remaining | Constraint | Resources | Work | Actual work | Text1 |
| --- | --- | --- | --- | --- | --- | --- | --- | --- | --- | --- | --- | --- | --- |
| 181 | 1.2.13 | **Apartado de tiempo que muestra la duración de la llamada en tiempo real. Cambia de color de acuerdo a que tan cercano está al límite pre-establecido. Verde si está debajo del límite (2 minutos y medio o menos), amarillo si empieza a acercarse (2 minutos y** | 15d | 2024-04-30 A | 2024-05-15 A |  | 100% |  |  | Iván | 360h | 360h | AR13 |
| 182 | 1.2.13.1 | **El componente se muestra con sus 3 colores (verde, amarillo, rojo).** | 2d | 2024-04-30 A | 2024-05-01 A |  | 100% |  |  | Iván | 48h | 48h |  |
| 183 | 1.2.13.1.1 | Se crea el componente para el contador de tiempo de la llamada. | 1d | 2024-04-30 A | 2024-04-30 A |  | 100% |  | start no earlier than 2024-04-30 | Iván | 8h | 8h |  |
| 184 | 1.2.13.1.2 | Se posiciona el componente dentro de la página. | 1d | 2024-05-01 A | 2024-05-01 A | 183 | 100% |  |  | Iván | 8h | 8h |  |
| 185 | 1.2.13.1.3 | El componente se puede mostrar en 3 colores (verde, rojo, amarillo). | 1d | 2024-05-01 A | 2024-05-01 A | 183 | 100% |  |  | Iván | 8h | 8h |  |
| 186 | 1.2.13.1.4 | El componente no presenta ningún fallo. | 1d | 2024-05-01 A | 2024-05-01 A | 183 | 100% |  |  | Iván | 8h | 8h |  |
| 187 | 1.2.13.2 | **El componente se ha vincluado con éxito a consultas en la base de datos y se comunica con ella.** | 4d | 2024-05-02 A | 2024-05-05 A |  | 100% |  |  | Iván | 64h | 64h |  |
| 188 | 1.2.13.2.1 | Se implementa función para hacer que el componente cambie de color. | 1d | 2024-05-02 A | 2024-05-02 A | 186 | 100% |  |  | Iván | 8h | 8h |  |
| 189 | 1.2.13.2.2 | Se establecen parámetros dentro de la función según la información que se va a adquirir. | 1d | 2024-05-03 A | 2024-05-03 A | 188 | 100% |  |  | Iván | 8h | 8h |  |
| 190 | 1.2.13.2.3 | Se crea una rutina para recibir la información pertinente de la base de datos. | 1d | 2024-05-04 A | 2024-05-04 A | 189 | 100% |  |  | Iván | 8h | 8h |  |
| 191 | 1.2.13.2.4 | Se reciben los datos que necesita la función sin errores. | 1d | 2024-05-05 A | 2024-05-05 A | 190 | 100% |  |  | Iván | 8h | 8h |  |
| 192 | 1.2.13.3 | **El componente despliega el tiempo de la llamada exitósamente.** | 4d | 2024-05-06 A | 2024-05-09 A |  | 100% |  |  | Iván | 64h | 64h |  |
| 193 | 1.2.13.3.1 | Se realizan llamadas de prueba. | 1d | 2024-05-06 A | 2024-05-06 A | 191 | 100% |  |  | Iván | 8h | 8h |  |
| 194 | 1.2.13.3.2 | La función del componente recibe los datos. | 1d | 2024-05-07 A | 2024-05-07 A | 193 | 100% |  |  | Iván | 8h | 8h |  |
| 195 | 1.2.13.3.3 | La función del componente hace que muestre el tiempo actual de la llamada. | 1d | 2024-05-08 A | 2024-05-08 A | 194 | 100% |  |  | Iván | 8h | 8h |  |
| 196 | 1.2.13.3.4 | No hay errores en el tiempo mostrado. | 1d | 2024-05-09 A | 2024-05-09 A | 195 | 100% |  |  | Iván | 8h | 8h |  |
| 197 | 1.2.13.4 | **El color del componente cambia de acuerdo al tiempo de la llamada y cuánto se ha acercado al límite en una llamada en tiempo real.** | 4d | 2024-05-12 A | 2024-05-15 A |  | 100% |  |  | Iván | 64h | 64h |  |
| 198 | 1.2.13.4.1 | Se realizan llamadas de prueba. | 1d | 2024-05-12 A | 2024-05-12 A | 196 | 100% |  | start no earlier than 2024-05-12 | Iván | 8h | 8h |  |
| 199 | 1.2.13.4.2 | El componente recibe información adecuadamente. | 1d | 2024-05-13 A | 2024-05-13 A | 198 | 100% |  |  | Iván | 8h | 8h |  |
| 200 | 1.2.13.4.3 | El componente cambia de color adecuadamente (verde si está debajo de 2 minutos y medio, amarillo di se está en 2 minutos y medio hasta 3, rojo si se ha pasado de 3). | 1d | 2024-05-14 A | 2024-05-14 A | 199 | 100% |  |  | Iván | 8h | 8h |  |
| 201 | 1.2.13.4.4 | No hay errores en el tiempo o color mostrado. | 1d | 2024-05-15 A | 2024-05-15 A | 200 | 100% |  |  | Iván | 8h | 8h |  |
| 202 | 1.2.14 | **El agente podrá acceder a un apartado en donde podrá verificar la evaluación y en caso de haberlos esccrito comentarios específicos de su supervisor** | 15d | 2024-04-30 A | 2024-05-15 |  | 95% | 0.75d |  | Gerardo | 224h | 145.6h | AR14 |
| 203 | 1.2.14.1 | **Diseñar un botón que describa correctamente la sección.** | 1d | 2024-04-30 A | 2024-04-30 A | 238 | 100% |  |  | Gerardo | 16h | 16h |  |
| 204 | 1.2.14.1.1 | Agregar dentro del la interfaz del agente un botón con la descripción del apartado. | 0.5d | 2024-04-30 A | 2024-04-30 A |  | 100% |  |  | Gerardo | 4h | 4h |  |
| 205 | 1.2.14.1.2 | El botón debe de seguir la fuente y los colores de la empresa. | 0.5d | 2024-04-30 A | 2024-04-30 A | 204 | 100% |  |  | Gerardo | 4h | 4h |  |

| ID | WBS | Task | Duration | Start | Finish | Predecessors | Complete | Remaining | Total slack | Constraint | Resources | Work | Actual work | Text1 |
| --- | --- | --- | --- | --- | --- | --- | --- | --- | --- | --- | --- | --- | --- | --- |
| 206 | 1.2.14.2 | **Recuperar los datos y comentarios de la evaluación del supervisor.** | 1d | 2024-05-01 A | 2024-05-01 |  | 80% | 0.2d | 13d |  | Gerardo | 16h | 12.8h |  |
| 207 | 1.2.14.2.1 | Acceder a la base de datos para jalar los resultados de la encuesta del respectivo agente | 1d | 2024-05-01 A | 2024-05-01 | 205 | 80% | 0.2d | 13d |  | Gerardo | 8h | 6.4h |  |
| 208 | 1.2.14.3 | **Mostrar los datos y comentarios del supervisor de una forma clara.** | 7d | 2024-05-03 A | 2024-05-09 A |  | 100% |  |  |  | Gerardo | 72h | 72h |  |
| 209 | 1.2.14.3.1 | Mostrar los puntajes en un apartado de la pantalla | 1d | 2024-05-03 A | 2024-05-03 A |  | 100% |  |  |  | Gerardo | 8h | 8h |  |
| 210 | 1.2.14.3.2 | Mostrar los comentarios específicos a la par de los puntajes | 1d | 2024-05-09 A | 2024-05-09 A | 209 | 100% |  |  | finish no earlier than 2024-05-09 | Gerardo | 8h | 8h |  |
| 211 | 1.2.15 | **Los agentes podrán ver las respuestas a sus solicitudes de ayuda, enviadas por el supervisor, en un centro de notificaciones en la pantalla principal. Para poder aplicar las medidas sugeridas por el supervisor.** | 15d | 2024-04-30 A | 2024-05-15 |  | 50% | 7.5d |  |  | Dani | 204h | 104h | AR15 |
| 212 | 1.2.15.1 | **Creación de la pantalla para el centro de notificaciones.** | 0.5d | 2024-04-30 A | 2024-04-30 A |  | 100% |  |  |  | Dani | 12h | 12h |  |
| 213 | 1.2.15.1.1 | Diseñar la interfaz de usuario para el centro de notificaciones. | 0.5d | 2024-04-30 A | 2024-04-30 A |  | 100% |  |  |  | Dani | 4h | 4h |  |
| 214 | 1.2.15.1.2 | Desarrollar la funcionalidad básica de la pantalla de notificaciones. | 0.5d | 2024-04-30 A | 2024-04-30 A |  | 100% |  |  |  | Dani | 4h | 4h |  |
| 215 | 1.2.15.2 | **Implementación del cuadro de mensaje para mostrar el texto del supervisor.** | 1d | 2024-05-15 | 2024-05-15 |  |  |  | 0d |  | Dani | 16h |  |  |
| 216 | 1.2.15.2.1 | Diseñar la apariencia del cuadro de mensaje. | 0.5d | 2024-05-15 | 2024-05-15 | 220 |  |  | 0d |  | Dani | 4h |  |  |
| 217 | 1.2.15.2.2 | Programar la funcionalidad para mostrar el texto del supervisor en el cuadro de mensaje. | 0.5d | 2024-05-15 | 2024-05-15 | 216 |  |  | 0d |  | Dani | 4h |  |  |
| 218 | 1.2.15.3 | **Integración de texto de sugerencia o ayuda con datos dummy en la pantalla de notificaciones.** | 2d | 2024-05-13 A | 2024-05-14 A |  | 100% |  |  |  | Dani | 32h | 32h |  |
| 219 | 1.2.15.3.1 | Establecer un canal de comunicación para recibir el texto del supervisor. | 1d | 2024-05-13 A | 2024-05-13 A | 223 | 100% |  |  |  | Dani | 8h | 8h |  |
| 220 | 1.2.15.3.2 | Desarrollar la lógica para dirigir el texto del supervisor a la pantalla de notificaciones. | 1d | 2024-05-14 A | 2024-05-14 A | 219 | 100% |  |  |  | Dani | 8h | 8h |  |
| 221 | 1.2.15.4 | **Implementación exitosa de los mensajes dummy en el centro de notificaciones.** | 1d | 2024-05-09 | 2024-05-09 |  |  |  | 5d |  | Dani | 24h |  |  |
| 222 | 1.2.15.4.1 | Probar la visualización de los mensajes en el centro de notificaciones. | 1d | 2024-05-09 | 2024-05-09 | 268 |  |  | 5d |  | Dani | 8h |  |  |
| 223 | 1.2.15.4.2 | Probar el funcionamiento del cuadro del centro de notificaciones. | 1d | 2024-05-09 | 2024-05-09 | 268 |  |  | 5d |  | Dani | 8h |  |  |
| 224 | 1.3 | **Supervisor** | 18d | 2024-04-25 A | 2024-05-15 |  | 92% | 1.38d | 0d |  |  | 2924h | 2439.56h |  |
| 225 | 1.3.1 | **En la pantalla principal, se mostrará un listado de llamadas activas que serán escaladas, ordenadas por prioridad, donde se evaluara principalmente el estado emocional del cliente. Por ejemplo: Si el cliente se encuentra estresado, la llamada con el agent** | 8d | 2024-04-29 A | 2024-05-06 A |  | 100% |  |  |  | Dani | 144h | 144h | SR1 |
| 226 | 1.3.1.1 | **Recuperar los datos del analisis sentimental y duración de la llamada de Amazon Connect** | 2d | 2024-05-01 A | 2024-05-02 A |  | 100% |  |  |  | Dani | 32h | 32h |  |
| 227 | 1.3.1.1.1 | Investigar y seleccionar algoritmos adecuados para cada tarea. | 1d | 2024-05-01 A | 2024-05-01 A |  | 100% |  |  | start no earlier than 2024-05-01 | Dani | 8h | 8h |  |
| 228 | 1.3.1.1.2 | Implementar y probar los algoritmos para garantizar su precisión y eficacia. | 1d | 2024-05-02 A | 2024-05-02 A | 227 | 100% |  |  |  | Dani | 8h | 8h |  |
| 229 | 1.3.1.2 | **Desarrollo completo de los algoritmos para análisis sentimental del cliente, cálculo de duración acumulada de la llamada y detección de solicitud de asistencia del agente.** | 1d | 2024-05-03 A | 2024-05-03 A |  | 100% |  |  |  | Dani | 24h | 24h |  |
| 230 | 1.3.1.2.1 | Recuperar información del estado de la solicitud de asistencia. | 1d | 2024-05-03 A | 2024-05-03 A | 228 | 100% |  |  |  | Dani | 8h | 8h |  |
| 231 | 1.3.1.2.2 | Generar funciones de cálculo de duración de llamada, calculo del análisis sentimental del agente y detección solicitud de asistencia e iniciar pruebas de visualización. | 1d | 2024-05-03 A | 2024-05-03 A | 228 | 100% |  |  |  | Dani | 8h | 8h |  |

| ID | WBS | Task | Duration | Start | Finish | Predecessors | Complete | Remaining | Actual start | Total slack | Free slack | Constraint | Resources | Work | Actual work | Text1 |
| --- | --- | --- | --- | --- | --- | --- | --- | --- | --- | --- | --- | --- | --- | --- | --- | --- |
| 232 | 1.3.1.3 | **Diseño finalizado de la interfaz de usuario para visualizar las llamadas activas con prioridad.** | 1d | 2024-05-04 A | 2024-05-04 A |  | 100% |  |  |  |  |  | Dani | 24h | 24h |  |
| 233 | 1.3.1.3.1 | Diseñar la disposición y la apariencia de la interfaz de usuario. | 1d | 2024-05-04 A | 2024-05-04 A | 231 | 100% |  |  |  |  |  | Dani | 8h | 8h |  |
| 234 | 1.3.1.3.2 | Crear prototipos y realizar pruebas de usabilidad para asegurar una experiencia de usuario óptima. | 1d | 2024-05-04 A | 2024-05-04 A | 231 | 100% |  |  |  |  |  | Dani | 8h | 8h |  |
| 235 | 1.3.2 | **En la sección designada para mostrar las llamadas activas, en la pantalla principal, por cada llamada activa se tendrá el nombre del agente, el nombre del cliente, el tiempo desde que comenzó la llamada y un análisis sentimental, el cuál a través de una f** | 7d | 2024-05-07 A | 2024-05-14 |  | 96% | 0.25d |  |  |  |  | Angel - Pobol | 284h | 184.4h | SR2 |
| 236 | 1.3.2.1 | **Se recupera la información de una llamada** | 7d | 2024-05-07 A | 2024-05-14 |  | 94% | 0.44d |  |  |  |  | Angel | 120h | 72.4h |  |
| 237 | 1.3.2.1.1 | Configurar endpoints que recuperen los datos en tiempo real de las llamadas activas | 1d | 2024-05-07 A | 2024-05-07 | 123 | 50% | 0.5d |  | 7d |  | finish no earlier than 2024-05-07 | Angel | 8h | 4h |  |
| 238 | 1.3.2.1.2 | Utilizar Amazon Connect para actualizar los datos continuamente | 1d | 2024-05-08 A | 2024-05-08 A | 237 | 100% |  |  |  |  |  | Angel | 8h | 8h |  |
| 239 | 1.3.2.1.3 | Verifica que la API recupere todos los datos | 6d | 2024-05-08 A | 2024-05-14 A | 237 | 100% |  |  |  |  | finish no earlier than 2024-05-14 | Angel | 48h | 48h |  |
| 240 | 1.3.2.2 | **Se visualiza el nombre del agente, el nombre del cliente, el tiempo acumulado y análisis sentimental** | 5d | 2024-05-09 A | 2024-05-14 A |  | 100% |  |  |  |  |  | Angel | 64h | 64h |  |
| 241 | 1.3.2.2.1 | Crear una aplicacion React con los respectivos componentes | 1d | 2024-05-09 A | 2024-05-09 A |  | 100% |  |  |  |  |  | Angel | 8h | 8h |  |
| 242 | 1.3.2.2.2 | Permitir que la interfaz se actualice a medida que cambian los datos | 2d | 2024-05-09 A | 2024-05-14 A |  | 100% |  |  |  |  | finish no earlier than 2024-05-14 | Angel | 16h | 16h |  |
| 243 | 1.3.2.3 | **Hay un botón que dice transcripción de la llamada** | 3d | 2024-05-12 A | 2024-05-14 A |  | 100% |  |  |  |  |  | Angel | 48h | 48h |  |
| 244 | 1.3.2.3.1 | Crear y diseñar el componente en React | 1d | 2024-05-12 A | 2024-05-12 A |  | 100% |  |  |  |  |  | Angel | 8h | 8h |  |
| 245 | 1.3.2.3.2 | Obtener datos actualizados de la transcripción | 1d | 2024-05-12 A | 2024-05-12 A |  | 100% |  |  |  |  |  | Angel | 8h | 8h |  |
| 246 | 1.3.2.3.3 | Verifica que la API recupere todos los datos | 1d | 2024-05-14 A | 2024-05-14 A |  | 100% |  |  |  |  | finish no earlier than 2024-05-14 | Angel | 8h | 8h |  |
| 247 | 1.3.3 | **Por cada llamada activa, ícono que cambia de color si un agente pide ayuda, al presionarlo, se mostrara el problema escrito por el agente y los datos del cliente, un botón para responder directamente, así como un botón para acceder a la transcripción de l** | 10d | 2024-05-05 | 2024-05-15 |  | 75% | 2.5d | 2024-04-25 |  |  |  | Aldehil | 184h | 152h | SR3 |
| 248 | 1.3.3.1 | **Cambiar los colores de un ícono a partir de datos dummies:** | 1d | 2024-05-05 | 2024-05-05 A |  | 100% |  | 2024-04-25 |  |  |  | Aldehil | 8h | 8h |  |
| 249 | 1.3.3.1.1 | Implementar la lógica para generar datos dummy que indiquen el estado de un agente | 1d | 2024-05-05 A | 2024-05-05 A |  | 100% |  |  |  |  |  | Aldehil | 8h | 8h |  |
| 250 | 1.3.3.1.2 | Utilizar estos datos para cambiar dinámicamente el color del ícono en la interfaz de | 1d | 2024-04-25 A | 2024-04-25 A |  | 100% |  |  |  |  |  |  |  |  |  |
| 251 | 1.3.3.2 | **Desplegar una ventana emergente al dar tap sobre el ícono de ayuda:** | 3d | 2024-05-05 A | 2024-05-07 A |  | 100% |  |  |  |  |  | Aldehil | 40h | 40h |  |
| 252 | 1.3.3.2.1 | Implementar un controlador de eventos para que el ícono de ayuda abra una ventana emergente al presionarlo. | 1d | 2024-05-05 A | 2024-05-05 A |  | 100% |  |  |  |  |  | Aldehil | 8h | 8h |  |
| 253 | 1.3.3.2.2 | Diseñar la interfaz de la ventana emergente para mostrar el mensaje recuperado del agente. | 1d | 2024-05-05 A | 2024-05-05 A | 154 | 100% |  |  |  |  |  | Aldehil | 8h | 8h |  |
| 254 | 1.3.3.3 | **Reutilizar los botones del requerimiento 2 y desplegarlos en la misma ventana emergente:** | 2d | 2024-05-13 | 2024-05-14 |  |  |  |  | 1d |  |  | Aldehil | 32h |  |  |
| 255 | 1.3.3.3.1 | Identificar y reutilizar el código y los elementos de interfaz de usuario del requerimiento 2 que correspondan a los botones necesarios. | 1d | 2024-05-13 | 2024-05-13 | 244 |  |  |  | 1d | 0d |  | Aldehil | 8h |  |  |
| 256 | 1.3.3.3.2 | Integrar estos botones en la ventana emergente creada en el milestone 4. | 1d | 2024-05-14 | 2024-05-14 | 255 |  |  |  | 1d |  |  | Aldehil | 8h |  |  |

| ID | WBS | Task | Duration | Start | Finish | Predecessors | Complete | Constraint | Resources | Work | Actual work | Text1 |
| --- | --- | --- | --- | --- | --- | --- | --- | --- | --- | --- | --- | --- |
| 257 | 1.3.3.4 | **Crear un botón de responder y desplegar una ventana emergente al darle tap:** | 1d | 2024-05-06 A | 2024-05-06 A |  | 100% |  | Aldehil | 24h | 24h |  |
| 258 | 1.3.3.4.1 | Agregar un botón de responder a la ventana emergente creada en el milestone 4. | 1d | 2024-05-06 A | 2024-05-06 A | 253 | 100% |  | Aldehil | 8h | 8h |  |
| 259 | 1.3.3.4.2 | Implementar un controlador de eventos para este botón que abra otra ventana emergente al presionarlo. | 1d | 2024-05-06 A | 2024-05-06 A | 253 | 100% |  | Aldehil | 8h | 8h |  |
| 260 | 1.3.4 | **Al dar tap sobre el botón de responder del requerimiento 3, se desplegará una ventana con un cuadro de texto para escribir la respuesta, y un botón para enviarla. Y un mensaje de confirmación al finalizar.** | 11d | 2024-04-30 A | 2024-05-10 A |  | 100% |  | Aldehil | 324h | 324h | SR4 |
| 261 | 1.3.4.1 | **Poder recuperar un mensaje escrito por el supervisor a través del cuadro de texto, una vez que se le de a enviar:** | 11d | 2024-04-30 A | 2024-05-10 A |  | 100% |  | Aldehil | 112h | 112h |  |
| 262 | 1.3.4.1.1 | Implementar la interfaz de usuario para incluir un cuadro de texto y un botón de enviar en la ventana emergente creada en el requerimiento 3 del supervisor. | 1d | 2024-05-10 A | 2024-05-10 A | 259 | 100% | finish no earlier than 2024-05-10 | Aldehil | 8h | 8h |  |
| 263 | 1.3.4.1.2 | Configurar un controlador de eventos para el botón de enviar. | 1d | 2024-04-30 A | 2024-04-30 A | 259 | 100% |  | Aldehil | 8h | 8h |  |
| 264 | 1.3.4.1.3 | Capturar el texto ingresado por el supervisor en el cuadro de texto al presionar el botón de enviar. | 1d | 2024-04-30 A | 2024-04-30 A | 259 | 100% |  | Aldehil | 8h | 8h |  |
| 265 | 1.3.4.2 | **Registrar el mensaje guardado en la base de datos:** | 2d | 2024-05-07 A | 2024-05-08 A |  | 100% |  | Aldehil | 48h | 48h |  |
| 266 | 1.3.4.2.1 | Configurar el controlador en el API para insertar el mensaje en la BD. | 1d | 2024-05-07 A | 2024-05-07 A | 259 | 100% |  | Aldehil | 8h | 8h |  |
| 267 | 1.3.4.2.2 | Configurar la conexión al endpoint, en la aplicación. | 1d | 2024-05-07 A | 2024-05-07 A | 259 | 100% |  | Aldehil | 8h | 8h |  |
| 268 | 1.3.4.2.3 | Escribir la lógica para insertar el mensaje escrito por el supervisor en la base de datos al presionar el botón de enviar a través del endpoint configurado en la actividad anterior. | 2d | 2024-05-07 A | 2024-05-08 A | 259 | 100% |  | Aldehil | 16h | 16h |  |
| 269 | 1.3.4.3 | **Mostrar un mensaje de confirmación al finalizar este proceso:** | 7.5d | 2024-04-30 A | 2024-05-07 A |  | 100% |  | Aldehil | 76h | 76h |  |
| 270 | 1.3.4.3.1 | Diseñar un mensaje de confirmación que se muestre al supervisor una vez que el mensaje haya sido correctamente guardado en la base de datos. | 1d | 2024-04-30 A | 2024-05-07 A | 259 | 100% |  | Aldehil | 8h | 8h |  |
| 271 | 1.3.4.3.2 | Implementar la lógica para mostrar este mensaje de confirmación en la interfaz de usuario. | 1d | 2024-04-30 A | 2024-05-07 A | 259 | 100% |  | Aldehil | 8h | 8h |  |
| 272 | 1.3.5 | **En la pantalla principal se visualizará el nombre del cliente y el tiempo de espera de manera cronológica, con las llamadas que tienen más tiempo de espera ubicadas en la parte superior de la lista.** | 6d | 2024-04-29 A | 2024-05-04 A |  | 100% |  | Noh Ah | 144h | 144h | SR5 |
| 273 | 1.3.5.1 | **Visualizar el nombre del cliente y el tiempo de espera de cada llamada en espera en la pantalla principal.** | 6d | 2024-04-29 A | 2024-05-04 A |  | 100% |  | Noh Ah | 96h | 96h |  |
| 274 | 1.3.5.1.1 | Extraer datos de llamadas en espera desde Connect. | 5d | 2024-04-29 A | 2024-05-03 A |  | 100% | start no earlier than 2024-04-29 | Noh Ah | 40h | 40h |  |
| 275 | 1.3.5.1.2 | Diseñar la interfaz de usuario en la pantalla principal para mostrar el nombre del cliente y el tiempo de espera de cada llamada. | 1d | 2024-05-04 A | 2024-05-04 A |  | 100% | start no earlier than 2024-05-04 | Noh Ah | 8h | 8h |  |
| 276 | 1.3.6 | **La pantalla principal contara con un menú lateral en el que se visualicen las pantallas de navegación. En la pantalla principal se muestran los agentes del grupo, cada uno con un indicador acerca de su estado (disponible, en llamada, descanso o ausente).** | 17d | 2024-04-26 A | 2024-05-15 A |  | 100% |  | Ingrid | 456h | 456h | SR6 |
| 277 | 1.3.6.1 | **Ver el menú lateral con las opciones de navegación del supervisor. Generar el diseño del menú** | 6d | 2024-04-26 A | 2024-05-03 A |  | 100% |  | Ingrid | 96h | 96h |  |
| 278 | 1.3.6.1.1 | Crear las referencias a las páginas del menú | 3d | 2024-04-26 A | 2024-04-30 A |  | 100% | finish no earlier than 2024-04-30 | Ingrid | 24h | 24h |  |
| 279 | 1.3.6.1.2 | Colocar las referencias | 2d | 2024-05-01 A | 2024-05-02 A |  | 100% | finish no earlier than 2024-05-02 | Ingrid | 16h | 16h |  |
| 280 | 1.3.6.1.3 | Realizar el diseño adecuado al resto de la interfaz | 1d | 2024-05-03 A | 2024-05-03 A |  | 100% | start no earlier than 2024-05-03 | Ingrid | 8h | 8h |  |

| ID | WBS | Task | Type | Duration | Start | Finish | Complete | Remaining | Total slack | Constraint | Resources | Work | Actual work | Text1 |
| --- | --- | --- | --- | --- | --- | --- | --- | --- | --- | --- | --- | --- | --- | --- |
| 281 | 1.3.6.2 | **Ver la información de los agentes de manera cuadriculada, con datos que no provienen de la base de datos.** |  | 9d | 2024-05-06 A | 2024-05-15 A | 100% |  |  |  | Ingrid | 144h | 144h |  |
| 282 | 1.3.6.2.1 | Generar el diseño de la cuadrícula |  | 3d | 2024-05-06 A | 2024-05-08 A | 100% |  |  | finish no earlier than 2024-05-08 | Ingrid | 24h | 24h |  |
| 283 | 1.3.6.2.2 | Generar las rutas para acceder a la base de datos |  | 1d | 2024-05-09 A | 2024-05-09 A | 100% |  |  | start no earlier than 2024-05-09 | Ingrid | 8h | 8h |  |
| 284 | 1.3.6.2.3 | Generar las tablas en la base de datos |  | 2d | 2024-05-09 A | 2024-05-11 A | 100% |  |  | finish no earlier than 2024-05-11 | Ingrid | 16h | 16h |  |
| 285 | 1.3.6.2.4 | Colocar datos de prueba para probar la funcionalidad |  | 2d | 2024-05-13 A | 2024-05-14 A | 100% |  |  | finish no earlier than 2024-05-14 | Ingrid | 16h | 16h |  |
| 286 | 1.3.6.2.5 | Asignar los colores adecuados para mostrar el funcionamiento de estas |  | 1d | 2024-05-15 A | 2024-05-15 A | 100% |  |  | start no earlier than 2024-05-15 | Ingrid | 8h | 8h |  |
| 287 | 1.3.6.3 | **La información que se muestra de los agentes proviene de la base de datos.** |  | 5d | 2024-05-04 A | 2024-05-08 A | 100% |  |  |  | Ingrid | 80h | 80h |  |
| 288 | 1.3.6.3.1 | Conectar la base de datos con el backend |  | 1d | 2024-05-04 A | 2024-05-04 A | 100% |  |  | start no earlier than 2024-05-04 | Ingrid | 8h | 8h |  |
| 289 | 1.3.6.3.2 | Rellenar la base de datos con información para generar pruebas de la funcionalidad |  | 2d | 2024-05-05 A | 2024-05-06 A | 100% |  |  | finish no earlier than 2024-05-06 | Ingrid | 16h | 16h |  |
| 290 | 1.3.6.3.3 | Colocar las referencias correspondientes a las rutas para la información de cada agente |  | 2d | 2024-05-07 A | 2024-05-08 A | 100% |  |  | start no earlier than 2024-05-07 | Ingrid | 16h | 16h |  |
| 291 | 1.3.7 | **En la pantalla de KPIs general se mostrara la resolución al primer contactoc(porcentaje), abandono de llamadas (porcentaje), nivel de servicio(porcentaje), tiempo promedio de llamada(métrica), velocidad media de respuesta(métrica), ocupación de centro de** |  | 7d | 2024-05-07 A | 2024-05-14 | 83% | 1.17d | 1d |  | Ingrid | 336h | 232.92h | SR7 |
| 292 | 1.3.7.1 | **Se muestra con texto los diferentes apartados con el KPI que deberían de mostrar.** |  | 3d | 2024-05-07 A | 2024-05-09 A | 100% |  |  |  | Ingrid | 64h | 64h |  |
| 293 | 1.3.7.1.1 | Generar el acomodo responsivo de los apartados de los KPIs |  | 2d | 2024-05-07 A | 2024-05-08 A | 100% |  |  | finish no earlier than 2024-05-08 | Ingrid | 16h | 16h |  |
| 294 | 1.3.7.1.2 | Generar los contextos y clases para colocar los objetos de los KPIs |  | 2d | 2024-05-08 A | 2024-05-09 A | 100% |  |  | start no earlier than 2024-05-08 | Ingrid | 16h | 16h |  |
| 295 | 1.3.7.1.3 | Colocar en texto cada uno de los KPIs en su espacio correspondiente | manual | 1d | 2024-05-09 A | 2024-05-09 A | 100% |  |  |  | Ingrid | 8h | 8h |  |
| 296 | 1.3.7.2 | **Las métricas y porcentajes mostrados son datos prueba** |  | 5d | 2024-05-09 A | 2024-05-14 | 81% | 0.96d | 1d |  | Ingrid | 120h | 96.92h |  |
| 297 | 1.3.7.2.1 | Crear las tablas necesarias para la información de los KPIs | manual | 1d | 2024-05-10 A | 2024-05-10 A | 100% |  |  |  | Ingrid | 8h | 8h |  |
| 298 | 1.3.7.2.2 | Generar las rutas y referencias necesarias para obtener la información de la base de dato |  | 5d | 2024-05-09 A | 2024-05-14 | 80% | 1d | 1d | start no earlier than 2024-05-09 | Ingrid | 40h | 32h |  |
| 299 | 1.3.7.2.3 | Colocar datos prueba en cada KPI para mostrar la funcionalidad de los colores |  | 2d | 2024-05-09 A | 2024-05-11 A | 100% |  |  | finish no earlier than 2024-05-11 | Ingrid | 16h | 16h |  |
| 300 | 1.3.7.2.4 | Generar la conexión con Amazon Connect |  | 5d | 2024-05-09 A | 2024-05-14 | 70% | 1.5d | 1d | finish no earlier than 2024-05-10 | Ingrid | 40h | 28h |  |
| 301 | 1.3.7.3 | **Las métricas y porcentajes visualizados provienen de la base de datos y de Amazon Connect, según corresponda.** |  | 6d | 2024-05-08 A | 2024-05-14 | 75% | 1.5d | 1d |  | Ingrid | 96h | 72h |  |
| 302 | 1.3.7.3.1 | Llenar la base de datos con los datos necesarios | manual | 1d | 2024-05-08 A | 2024-05-08 A | 100% |  |  |  | Ingrid | 8h | 8h |  |
| 303 | 1.3.7.3.2 | Colocar las referencias correspondientes para cada KPI respecto a la ruta para obtener la información correspondiente |  | 5d | 2024-05-09 A | 2024-05-14 | 70% | 1.5d | 1d | start no earlier than 2024-05-09 | Ingrid | 40h | 28h |  |
| 304 | 1.3.8 | **Al seleccionar uno de los KPI en la pantalla se podrán visualizar datos históricos por medio de gráficas para elegir el tiempo deseado, siendo 60 días el máximo atrás que se puede elegir.** |  | 10d | 2024-05-01 A | 2024-05-11 A | 100% |  |  |  | Ingrid | 384h | 384h | SR8 |
| 305 | 1.3.8.1 | **Visualizar el filtro de búsqueda, con su filtro por defecto de 15 minutos y poder elegir una fecha que vaya máximo 60 días atrás.** |  | 8d | 2024-05-01 A | 2024-05-08 A | 100% |  |  |  | Ingrid | 112h | 112h |  |
| 306 | 1.3.8.1.1 | Colocar un botón de Ver más | manual | 1d | 2024-05-01 A | 2024-05-01 A | 100% |  |  |  | Ingrid | 8h | 8h |  |
| 307 | 1.3.8.1.2 | Colocar el filtro de selección de búsqueda |  | 1d | 2024-05-02 A | 2024-05-02 A | 100% |  |  | start no earlier than 2024-05-02 | Ingrid | 8h | 8h |  |
| 308 | 1.3.8.1.3 | Generar la vista con la gráfica, en lugar de la métrica anteriormente visualizada |  | 1d | 2024-05-03 A | 2024-05-03 A | 100% |  |  | start no earlier than 2024-05-03 | Ingrid | 8h | 8h |  |
| 309 | 1.3.8.1.4 | Colocar gráficas con datos prueba para verificar la visualización |  | 1d | 2024-05-06 A | 2024-05-06 A | 100% |  |  | start no earlier than 2024-05-06 | Ingrid | 8h | 8h |  |
| 310 | 1.3.8.1.5 | Generar los queries necesarios para realizar la busqueda |  | 2d | 2024-05-07 A | 2024-05-08 A | 100% |  |  | finish no earlier than 2024-05-08 | Ingrid | 16h | 16h |  |

| ID | WBS | Task | Type | Duration | Start | Finish | Predecessors | Complete | Remaining | Actual start | Total slack | Constraint | Resources | Work | Actual work | Text1 |
| --- | --- | --- | --- | --- | --- | --- | --- | --- | --- | --- | --- | --- | --- | --- | --- | --- |
| 311 | 1.3.8.2 | **Se visualizan las gráficas correspondientes al KPI elegido, con su filtro por defecto.** |  | 8d | 2024-05-03 A | 2024-05-11 A |  | 100% |  |  |  |  | Ingrid | 112h | 112h |  |
| 312 | 1.3.8.2.1 | Se colocan las rutas adecuadas para poder hacer los queries necesarios | manual | 2d | 2024-05-03 A | 2024-05-04 A |  | 100% |  |  |  |  | Ingrid | 16h | 16h |  |
| 313 | 1.3.8.2.2 | Se ingresan los datos necesarias para poder realizar las pruebas dentro de la base de datos |  | 2d | 2024-05-07 A | 2024-05-08 A |  | 100% |  |  |  | finish no earlier than 2024-05-08 | Ingrid | 16h | 16h |  |
| 314 | 1.3.8.2.3 | Se hace uso únicamente el llamado de información de los últimos 15 minutos |  | 3d | 2024-05-08 A | 2024-05-11 A |  | 100% |  |  |  | finish no earlier than 2024-05-11 | Ingrid | 24h | 24h |  |
| 315 | 1.3.8.3 | **La información mostrada en las gráficas corresponde al filtro elegido de búsqueda.** |  | 5d | 2024-05-06 A | 2024-05-10 A |  | 100% |  |  |  |  | Ingrid | 88h | 88h |  |
| 316 | 1.3.8.3.1 | Se realiza la prueba de selección del tiempo con la información correspondiente. | manual | 5d | 2024-05-06 A | 2024-05-10 A |  | 100% |  |  |  |  | Ingrid | 40h | 40h |  |
| 317 | 1.3.8.3.2 | Se implementan los colores y diseño establecido. | manual | 1d | 2024-05-07 A | 2024-05-07 A |  | 100% |  |  |  |  | Ingrid | 8h | 8h |  |
| 318 | 1.3.9 | **El supervisor puede acceder al perfil de cada agente desde un botón en el menú lateral. Podrá ver los datos generales del agente (nombre, imagen, horario laboral) y los KPIs de su atención de llamadas en un día específico (llamadas respondidas, abandonada** |  | 14d | 2024-05-01 A | 2024-05-15 |  | 85% | 2.04d |  | 0d |  | Noh Ah | 392h | 258.24h | SR9 |
| 319 | 1.3.9.1 | **Visualizar lo datos generales de los agentes.** |  | 6d | 2024-05-01 A | 2024-05-06 |  | 98% | 0.15d |  | 8d |  | Noh Ah | 144h | 141.6h |  |
| 320 | 1.3.9.1.1 | Configurar el acceso a los datos de los agentes desde Amazon Connect. |  | 4d | 2024-05-01 A | 2024-05-04 A |  | 100% |  |  |  | start no earlier than 2024-04-30 | Noh Ah | 32h | 32h |  |
| 321 | 1.3.9.1.2 | Extraer los datos de los agentes desde Connect. |  | 3d | 2024-05-04 A | 2024-05-06 A |  | 100% |  |  |  |  | Noh Ah | 24h | 24h |  |
| 322 | 1.3.9.1.3 | Procesar los datos para su visualización. |  | 3d | 2024-05-01 A | 2024-05-03 |  | 90% | 0.3d |  | 11d | finish no earlier than 2024-05-03 | Noh Ah | 24h | 21.6h |  |
| 323 | 1.3.9.1.4 | Diseñar la interfaz de usuario para mostrar los datos generales de los agentes. |  | 2d | 2024-05-05 A | 2024-05-06 A |  | 100% |  |  |  | finish no earlier than 2024-05-06 | Noh Ah | 16h | 16h |  |
| 324 | 1.3.9.2 | **Consultar los KPIs de atención de llamadas.** |  | 7d | 2024-05-08 A | 2024-05-15 |  | 71% | 2.03d |  | 0d |  | Noh Ah | 136h | 112.8h |  |
| 325 | 1.3.9.2.1 | Configurar la extracción de datos de los KPIs desde Connect. |  | 5d | 2024-05-08 A | 2024-05-13 |  | 60% | 2d |  | 2d | finish no earlier than 2024-05-13 | Noh Ah | 40h | 24h |  |
| 326 | 1.3.9.2.2 | Desarrollar la lógica para consultar y calcular los KPIs (llamadas respondidas, abandonadas, duración promedio). |  | 3d | 2024-05-12 A | 2024-05-14 |  | 90% | 0.3d |  | 1d |  | Noh Ah | 24h | 21.6h |  |
| 327 | 1.3.9.2.3 | Integrar la visualización de los KPIs en la interfaz de usuario. |  | 2d | 2024-05-14 A | 2024-05-15 |  | 70% | 0.6d |  | 0d |  | Noh Ah | 16h | 11.2h |  |
| 328 | 1.3.10 | **El superviso puede acceder a un apartado en donde podrá contetar unas preguntas las cuales podrán evaluar el desempeño del agente. Y en cas de necesitar ser más objetivo durante su comentario, complementarlo con un comentario más detallado.** |  | 14.5d | 2024-04-30 | 2024-05-15 |  | 91% | 1.32d | 2024-04-25 |  |  | Gerardo | 276h | 160h | SR10 |
| 329 | 1.3.10.1 | **Redactar las preguntas necesarias que se pueda argumentar de manera clara y efectiva para describir el desempaño del agente.** |  | 11d | 2024-04-25 A | 2024-05-07 A |  | 100% |  |  |  |  | Gerardo | 104h | 104h |  |
| 330 | 1.3.10.1.1 | Redactar preguntas que ayuden a puntuar y a describir el trabajo del agente. |  | 1d | 2024-04-25 A | 2024-04-25 A |  | 100% |  |  |  |  | Gerardo | 8h | 8h |  |
| 331 | 1.3.10.1.2 | Agregar un apartado donde se puedan puntuar del 1 al 10 el desempeño del agente |  | 1d | 2024-05-07 A | 2024-05-07 A | 323 | 100% |  |  |  |  | Gerardo | 8h | 8h |  |
| 332 | 1.3.10.2 | **Diseñar el apartado de las preguntas de manera clara.** |  | 1d | 2024-05-08 A | 2024-05-08 A |  | 100% |  |  |  |  | Gerardo | 16h | 16h |  |
| 333 | 1.3.10.2.1 | Diseñar una interfaz donde se pueda ver la división clara de cada una de las preguntas. |  | 1d | 2024-05-08 A | 2024-05-08 A | 331 | 100% |  |  |  |  | Gerardo | 8h | 8h |  |
| 334 | 1.3.10.3 | **Agregar una sección de comentarios para cada una de las preguntas.** |  | 0.5d | 2024-05-09 A | 2024-05-09 A |  | 100% |  |  |  |  | Gerardo | 8h | 8h |  |
| 335 | 1.3.10.3.1 | Establecer de manera clara que apartado de comentarios corresponde a cada pregunta |  | 0.5d | 2024-05-09 A | 2024-05-09 A | 333 | 100% |  |  |  |  | Gerardo | 4h | 4h |  |

| ID | WBS | Task | Duration | Start | Finish | Predecessors | Complete | Remaining | Total slack | Resources | Work | Actual work |
| --- | --- | --- | --- | --- | --- | --- | --- | --- | --- | --- | --- | --- |
| 336 | 1.3.10.4 | **Guardar los datos de la encuesta al agente en la base de datos.** | 1d | 2024-05-09 A | 2024-05-10 A |  | 100% |  |  | Gerardo | 16h | 16h |
| 337 | 1.3.10.4.1 | Crear un post un método post donde se puedan subir los resultados y comentarios a la base de datos hacia su respectivo agente | 1d | 2024-05-09 A | 2024-05-10 A | 335 | 100% |  |  | Gerardo | 8h | 8h |
| 338 | 1.3.10.5 | **Enviar los datos de la encuesta al agente.** | 1d | 2024-05-10 A | 2024-05-12 |  | 50% | 0.5d | 3.5d | Gerardo | 16h | 8h |
| 339 | 1.3.10.5.1 | Crear un método get donde se pueda obtener los resultados y comentarios de los respectivos agentes | 1d | 2024-05-10 A | 2024-05-12 | 337 | 50% | 0.5d | 3.5d | Gerardo | 8h | 4h |
